| id | name | start | end | percent | duration | outlineLevel | summary | uniqueID | priority | work | actualWork | percentWorkComplete | parentId | notes | dependencies | milestone |
| --- | --- | --- | --- | --- | --- | --- | --- | --- | --- | --- | --- | --- | --- | --- | --- | --- |
| 0 | tBits_Implementation_in_JSPL_Angul_Phase_2_Expansion_Project_Plan_Baseline | 2021-06-01T09:30 | 2021-06-21T15:18 | 0.0 | 17.6d | 0 | True | 0 | 500 | 0.0h | 0.0h | 0.0 |  |  |  |  |
| 1 | APMSIDC-GoAP | 2021-06-01T09:30 | 2021-06-21T15:18 | 0.0 | 17.6d | 1 | True | 1 | 500 | 0.0h | 0.0h | 0.0 | 0 |  |  |  |
| 2 | tBits Collabwrite Deployment | 2021-06-01T09:30 | 2021-06-21T15:18 | 0.0 | 17.6d | 2 | True | 143 | 500 | 0.0h | 0.0h | 0.0 | 1 | Please note the following: / 1. Proposed Project Execution Structure to be followed - including formation of Steering Committee, Package Level Committee, Application Sustainance team. / 2. The inputs required - including in the formats in which they are required - will be specified by TTSPL, the required inputs are to made available by the Client during the Kick-Off Meeting. / 3. The Project Steering Committee will meet - once every 5 days. / 4. There has been to a joint listing of the deliverables and all the team members who are expected to take the handover from TTSPL should be identified and be made a part of the project team. |  |  |
| 3 | NTP + Moblisation period | 2021-06-01T09:30 | 2021-06-04T09:30 | 0.0 | 3.0d | 3 |  | 144 | 500 | 0.0h | 0.0h | 0.0 | 2 |  |  |  |
| 4 | Technical - Setup, Administration, Sustainance of tBits CollabWrite | 2021-06-04T09:30 | 2021-06-21T15:18 | 0.0 | 14.6d | 3 | True | 145 | 500 | 0.0h | 0.0h | 0.0 | 2 |  | 3 |  |
| 5 | Installation | 2021-06-04T09:30 | 2021-06-11T09:30 | 0.0 | 6.0d | 4 | True | 146 | 500 | 0.0h | 0.0h | 0.0 | 4 |  |  |  |
| 6 | Installation of tBits [ 2 instances] + 1 DR Instance | 2021-06-04T09:30 | 2021-06-05T09:30 | 0.0 | 1.0d | 5 |  | 151 | 500 | 0.0h | 0.0h | 0.0 | 5 |  |  |  |
| 7 | Integration with LDAP Server & Central Authentication Service | 2021-06-05T09:30 | 2021-06-07T09:30 | 0.0 | 1.0d | 5 |  | 152 | 500 | 0.0h | 0.0h | 0.0 | 5 |  | 6 |  |
| 8 | Integration with email server - incoming & outgoing emails | 2021-06-07T09:30 | 2021-06-08T09:30 | 0.0 | 1.0d | 5 |  | 153 | 500 | 0.0h | 0.0h | 0.0 | 5 |  | 7 |  |
| 9 | Load Balancer Configuration - HA Proxy, KeepAlived, Floating IP | 2021-06-08T09:30 | 2021-06-09T09:30 | 0.0 | 1.0d | 5 |  | 154 | 500 | 0.0h | 0.0h | 0.0 | 5 |  | 8 |  |
| 10 | DR Server Setup - including MySQL DB Replication + rSync Files | 2021-06-09T09:30 | 2021-06-10T09:30 | 0.0 | 1.0d | 5 |  | 155 | 500 | 0.0h | 0.0h | 0.0 | 5 |  | 9 |  |
| 11 | Documentation - Production Support Manual | 2021-06-04T09:30 | 2021-06-10T09:30 | 0.0 | 5.0d | 5 |  | 162 | 500 | 0.0h | 0.0h | 0.0 | 5 |  |  |  |
| 12 | Support Process Set-up for Client Users [another BA in the same tBits installation] | 2021-06-10T09:30 | 2021-06-11T09:30 | 0.0 | 1.0d | 5 |  | 163 | 500 | 0.0h | 0.0h | 0.0 | 5 |  | 11 |  |
| 13 | Customization : tBits for First Project as per client coordination & control process | 2021-06-04T09:30 | 2021-06-19T10:18 | 0.0 | 13.1d | 4 | True | 319 | 500 | 0.0h | 0.0h | 0.0 | 4 |  |  |  |
| 14 | First Project Customization | 2021-06-04T09:30 | 2021-06-12T09:30 | 0.0 | 7.0d | 5 | True | 318 | 500 | 0.0h | 0.0h | 0.0 | 13 |  |  |  |
| 15 | Configuration of the Business Areas | 2021-06-04T09:30 | 2021-06-09T09:30 | 0.0 | 4.0d | 6 |  | 317 | 500 | 0.0h | 0.0h | 0.0 | 14 |  | 3 |  |
| 16 | Business Area Rules & Workflows | 2021-06-09T09:30 | 2021-06-10T09:30 | 0.0 | 1.0d | 6 |  | 316 | 500 | 0.0h | 0.0h | 0.0 | 14 |  | 15 |  |
| 17 | Permissions / RBAC | 2021-06-10T09:30 | 2021-06-11T09:30 | 0.0 | 1.0d | 6 |  | 315 | 500 | 0.0h | 0.0h | 0.0 | 14 |  | 16 |  |
| 18 | Testing by the tBits team | 2021-06-11T09:30 | 2021-06-12T09:30 | 0.0 | 1.0d | 6 |  | 314 | 500 | 0.0h | 0.0h | 0.0 | 14 |  | 17 |  |
| 19 | UAT-1 with the client team | 2021-06-12T09:30 | 2021-06-14T09:30 | 0.0 | 1.0d | 5 |  | 313 | 500 | 0.0h | 0.0h | 0.0 | 13 |  | 18 |  |
| 20 | Incorporation of the comments | 2021-06-14T09:30 | 2021-06-15T09:30 | 0.0 | 1.0d | 5 |  | 312 | 500 | 0.0h | 0.0h | 0.0 | 13 |  | 19 |  |
| 21 | UAT-2 with the client team | 2021-06-15T09:30 | 2021-06-16T09:30 | 0.0 | 1.0d | 5 |  | 311 | 500 | 0.0h | 0.0h | 0.0 | 13 |  | 20 |  |
| 22 | Incorporation of the comments | 2021-06-16T09:30 | 2021-06-17T09:30 | 0.0 | 1.0d | 5 |  | 310 | 500 | 0.0h | 0.0h | 0.0 | 13 |  | 21 |  |
| 23 | Documentation & Reports | 2021-06-17T09:30 | 2021-06-19T09:30 | 0.0 | 2.0d | 5 |  | 304 | 500 | 0.0h | 0.0h | 0.0 | 13 |  | 22 |  |
| 24 | Readiness for GoLive | 2021-06-19T09:30 | 2021-06-19T10:18 | 0.0 | 0.1d | 5 |  | 296 | 500 | 0.0h | 0.0h | 0.0 | 13 |  | 23 |  |
| 25 | Import of Historical Data | 2021-06-04T09:30 | 2021-06-12T09:30 | 0.0 | 7.0d | 4 | True | 383 | 500 | 0.0h | 0.0h | 0.0 | 4 |  |  |  |
| 26 | Specifications of Program to be created for the import of data | 2021-06-04T09:30 | 2021-06-05T09:30 | 0.0 | 1.0d | 5 |  | 384 | 500 | 0.0h | 0.0h | 0.0 | 25 |  | 3 |  |
| 27 | Sample Data Import | 2021-06-05T09:30 | 2021-06-07T09:30 | 0.0 | 1.0d | 5 |  | 385 | 500 | 0.0h | 0.0h | 0.0 | 25 |  | 26 |  |
| 28 | Sample Data Verification | 2021-06-07T09:30 | 2021-06-08T09:30 | 0.0 | 1.0d | 5 |  | 386 | 500 | 0.0h | 0.0h | 0.0 | 25 |  | 27 |  |
| 29 | Production Run - import of data | 2021-06-08T09:30 | 2021-06-09T09:30 | 0.0 | 1.0d | 5 |  | 387 | 500 | 0.0h | 0.0h | 0.0 | 25 |  | 28 |  |
| 30 | Verification by the client team | 2021-06-09T09:30 | 2021-06-10T09:30 | 0.0 | 1.0d | 5 |  | 388 | 500 | 0.0h | 0.0h | 0.0 | 25 |  | 29 |  |
| 31 | Data transfer to the Production server | 2021-06-10T09:30 | 2021-06-11T09:30 | 0.0 | 1.0d | 5 |  | 389 | 500 | 0.0h | 0.0h | 0.0 | 25 |  | 30 |  |
| 32 | Readiness for GoLive | 2021-06-11T09:30 | 2021-06-12T09:30 | 0.0 | 1.0d | 5 |  | 395 | 500 | 0.0h | 0.0h | 0.0 | 25 |  | 31 |  |
| 33 | End User Training | 2021-06-19T10:18 | 2021-06-21T15:18 | 0.0 | 1.5d | 4 | True | 396 | 500 | 0.0h | 0.0h | 0.0 | 4 | The required infrastructure for training us to be provided by JPL. The list of the people who are to be trained and the various locations where the training is to be done - is to decided at the time of KOM. |  |  |
| 34 | Training Session-1 PMO | 2021-06-19T10:18 | 2021-06-19T15:18 | 0.0 | 0.5d | 5 |  | 397 | 500 | 0.0h | 0.0h | 0.0 | 33 |  | 24 |  |
| 35 | Training Session-2 Owners' Engineer | 2021-06-19T15:18 | 2021-06-21T10:18 | 0.0 | 0.5d | 5 |  | 398 | 500 | 0.0h | 0.0h | 0.0 | 33 |  | 34 |  |
| 36 | Training Session-3 Existing Projects | 2021-06-21T10:18 | 2021-06-21T15:18 | 0.0 | 0.5d | 5 |  | 399 | 500 | 0.0h | 0.0h | 0.0 | 33 |  | 35 |  |
| 37 | GoLive Declaration | 2021-06-19T10:18 | 2021-06-19T10:18 | 0.0 | 0.0d | 5 |  | 400 | 500 | 0.0h | 0.0h | 0.0 | 33 |  | 13,25 | True |
